# Children's book schedule

Schedule from MS Project, 2015-04-06 to 2015-11-19, costs in $.
Lucerne Publishing

## Calendars

- Standard: Mon-Fri 08:00-12:00, 13:00-17:00; Sat-Sun off.

## Resources

| Resource | Rate | Notes |
| --- | --- | --- |
| Carole Poland | 52.5 |  |
| Color Setting Services |  |  |
| Copyeditors | 45 |  |
| Dan Jump | 75.5 |  |
| Hany Morcos | 38.75 |  |
| Jane Dow | 55 |  |
| John Evans | 69.5 |  |
| Jun Cao | 42 |  |
| Katie Jordan | 48 |  |
| Luis Sousa | 70 |  |
| Printing Service |  |  |
| Robin Wood | 44 |  |
| Sharon Salavaria | 27.5 | Sharon's standard pay rate is adjusted for her half-time work schedule. |
| Tad Orman |  |  |
| Toby Nixon | 67.5 | Toby worked on launch campaigns for Toni Poe's previous two books. |
| Travel |  |  |
| Vikas Jain | 22 |  |
| William Flash |  |  |
| Zac Woodall | 55 |  |

## Schedule

| ID | WBS | Task | Type | Duration | Start | Finish | Predecessors | Total slack | Resources | Work | Cost |
| --- | --- | --- | --- | --- | --- | --- | --- | --- | --- | --- | --- |
| 1 | 1 | **Acquisition** |  | 25d | 2015-04-06 | 2015-05-08 |  | 0d |  | 220h | 7,200 |
| 2 | 1.1 | Manuscript received | milestone | 0d | 2015-04-06 | 2015-04-06 |  | 0d |  |  |  |
| 3 | 1.2 | Content edit |  | 15d | 2015-04-06 | 2015-04-24 | 2 | 0d | Carole Poland | 120h | 6,300 |
| 4 | 1.3 | Author review of content edit |  | 10d | 2015-04-27 | 2015-05-08 | 3 | 0d | Tad Orman; Copyeditors [25%] | 100h | 900 |
| 5 | 1.4 | Handoff to Editorial | milestone | 0d | 2015-05-08 | 2015-05-08 | 4 | 0d | Carole Poland |  |  |
| 6 | 2 | **Editorial** |  | 35d | 2015-05-11 | 2015-06-26 | 1 | 0d |  | 420h | 14,800 |
| 7 | 2.1 | Organize manuscript for copyedit |  | 5d | 2015-05-11 | 2015-05-15 |  | 0d | Hany Morcos | 40h | 1,550 |
| 8 | 2.2 | Copyedit |  | 15d | 2015-05-18 | 2015-06-05 | 7 | 0d | Copyeditors [200%] | 240h | 10,800 |
| 9 | 2.3 | Author review of copyedit |  | 10d | 2015-06-08 | 2015-06-19 | 8 | 0d | Tad Orman; Copyeditors [25%] | 100h | 900 |
| 10 | 2.4 | Copyedit incorp |  | 5d | 2015-06-22 | 2015-06-26 | 9 | 0d | Hany Morcos | 40h | 1,550 |
| 11 | 2.5 | Handoff to Production | milestone | 0d | 2015-06-26 | 2015-06-26 | 10 | 0d | Hany Morcos |  |  |
| 12 | 3 | **Design and Production** |  | 63d | 2015-06-29 | 2015-09-23 | 6 | 0d |  | 644h | 31,170 |
| 13 | 3.1 | Set pages |  | 15d | 2015-06-29 | 2015-07-17 |  | 0d | Jane Dow | 120h | 6,600 |
| 14 | 3.2 | Interior illustration design |  | 15d | 2015-07-20 | 2015-08-07 | 13 | 0d | Luis Sousa | 120h | 8,400 |
| 15 | 3.3 | **1st Pages review** |  | 25d | 2015-08-10 | 2015-09-11 | 14 | 0d |  | 220h | 7,450 |
| 16 | 3.3.1 | Proofread and index |  | 10d | 2015-08-10 | 2015-08-21 |  | 0d | Tad Orman; Copyeditors | 100h | 900 |
| 17 | 3.3.2 | Incorporate 1st Pages review |  | 5d | 2015-08-24 | 2015-08-28 | 16 | 0d | Hany Morcos | 40h | 1,550 |
| 18 | 3.3.3 | Send proofed pages to Production | milestone | 0d | 2015-08-28 | 2015-08-28 | 17 | 0d | Hany Morcos |  |  |
| 19 | 3.3.4 | Enter page corrections and index |  | 5d | 2015-08-31 | 2015-09-04 | 18 | 0d | Jane Dow | 40h | 2,200 |
| 20 | 3.3.5 | Cover design |  | 5d | 2015-09-07 | 2015-09-11 | 19 | 0d | Luis Sousa | 40h | 2,800 |
| 21 | 3.4 | **2nd Pages review** |  | 8d | 2015-09-14 | 2015-09-23 |  | 0d |  | 128h | 5,920 |
| 22 | 3.4.1 | Proof and review |  | 4d | 2015-09-14 | 2015-09-17 | 20 | 0d | Hany Morcos | 32h | 1,240 |
| 23 | 3.4.2 | Send proofed pages to Production | milestone | 0d | 2015-09-17 | 2015-09-17 | 22 | 0d | Hany Morcos |  |  |
| 24 | 3.4.3 | Final review |  | 4d | 2015-09-18 | 2015-09-23 | 23 | 0d | Jane Dow; Hany Morcos; Carole Poland | 96h | 4,680 |

| ID | WBS | Task | Duration | Start | Finish | Predecessors | Total slack | Free slack | Resources | Work | Cost |
| --- | --- | --- | --- | --- | --- | --- | --- | --- | --- | --- | --- |
| 25 | 3.5 | **Design book's companion website** | 5d | 2015-09-14 | 2015-09-18 |  | 3d |  |  | 56h | 2,800 |
| 26 | 3.5.1 | Create mockup | 3d | 2015-09-14 | 2015-09-16 | 20 | 3d | 0d | Luis Sousa | 24h | 1,680 |
| 27 | 3.5.2 | Review with author | 2d | 2015-09-17 | 2015-09-18 | 26 | 3d |  | Luis Sousa; Tad Orman | 32h | 1,120 |
| 28 | 4 | **Color prep and printing** | 41d | 2015-09-24 | 2015-11-19 |  | 0d |  |  | 328h | 310 |
| 29 | 4.1 | Send to color house | 1d | 2015-09-24 | 2015-09-24 | 24, 27 | 0d |  | Hany Morcos | 8h | 310 |
| 30 | 4.2 | Generate proofs | 10d | 2015-09-25 | 2015-10-08 | 29 | 0d |  | Color Setting Services | 80h |  |
| 31 | 4.3 | Print and ship | 30d | 2015-10-09 | 2015-11-19 | 30 | 0d |  | Printing Service | 240h |  |
