# Children's Gourmet Cookbook

Schedule from MS Project, 2015-07-13 to 2015-11-04, status date 2015-09-16, costs in $, A marks actual dates.
Lucerne Publishing

## Calendars

- Standard: Mon-Fri 08:00-12:00, 13:00-17:00; Sat-Sun off.

## Resources

| Resource | Rate |
| --- | --- |
| John Evans | 62 |
| Katie Jordan | 48 |
| Robin Wood | 44 |
| William Flash | 55 |
| Carole Poland | 52.5 |
| Printing Service |  |
| Color Setting Services |  |
| Copyeditors |  |

## Schedule

| ID | WBS | Task | Type | Duration | Start | Finish | Predecessors | Complete | Remaining | Baseline start | Baseline finish | Baseline duration | Total slack | Free slack | Resources | Work | Actual work | Cost | Baseline cost | Actual cost |
| --- | --- | --- | --- | --- | --- | --- | --- | --- | --- | --- | --- | --- | --- | --- | --- | --- | --- | --- | --- | --- |
| 1 | 1 | **Acquisition** |  | 33d | 2015-07-13 A | 2015-08-26 A |  | 100% |  | 2015-07-13 | 2015-08-14 | 25d |  |  |  | 232h | 232h | 12,180 | 10,500 | 12,180 |
| 2 | 1.1 | Manuscript received | milestone | 0d | 2015-07-13 A | 2015-07-13 A |  | 100% |  | 2015-07-13 | 2015-07-13 | 0d |  |  | Carole Poland |  |  |  |  |  |
| 3 | 1.2 | Content edit |  | 29d | 2015-07-15 A | 2015-08-26 A | 2 | 100% |  | 2015-07-13 | 2015-08-14 | 25d |  |  | Carole Poland | 232h | 232h | 12,180 | 10,500 | 12,180 |
| 4 | 1.3 | Handoff to Editorial | milestone | 0d | 2015-08-26 A | 2015-08-26 A | 3 | 100% |  | 2015-08-14 | 2015-08-14 | 0d |  |  | Carole Poland |  |  |  |  |  |
| 5 | 2 | **Editorial** |  | 30d | 2015-08-27 A | 2015-10-07 | 1 | 40% | 18d | 2015-08-17 | 2015-09-25 | 30d | 0d |  |  | 240h | 96h | 3,520 | 3,520 | 1,760 |
| 6 | 2.1 | Organize manuscript for copyedit |  | 5d | 2015-08-27 A | 2015-09-02 A |  | 100% |  | 2015-08-17 | 2015-08-21 | 5d |  |  | Robin Wood | 40h | 40h | 1,760 | 1,760 | 1,760 |
| 7 | 2.2 | Copyedit |  | 20d | 2015-09-03 A | 2015-09-30 | 6 | 35% | 13d | 2015-08-24 | 2015-09-18 | 20d | 0d |  | Copyeditors | 160h | 56h |  |  |  |
| 8 | 2.3 | Copyedit incorp |  | 5d | 2015-10-01 | 2015-10-07 | 7 |  |  | 2015-09-21 | 2015-09-25 | 5d | 0d |  | Robin Wood | 40h |  | 1,760 | 1,760 |  |
| 9 | 2.4 | Handoff to Production | milestone | 0d | 2015-10-07 | 2015-10-07 | 8 |  |  | 2015-09-25 | 2015-09-25 | 0d | 0d |  | Robin Wood |  |  |  |  |  |
| 10 | 3 | **Design and Production** |  | 20d | 2015-08-27 A | 2015-09-23 | 5SS | 63% | 7.33d | 2015-08-17 | 2015-09-11 | 20d | 10d |  |  | 320h | 208h | 16,160 | 16,160 | 10,432 |
| 11 | 3.1 | Cover design |  | 5d | 2015-08-27 A | 2015-09-02 A |  | 100% |  | 2015-08-17 | 2015-08-21 | 5d |  |  | William Flash | 40h | 40h | 2,200 | 2,200 | 2,200 |
| 12 | 3.2 | Set pages |  | 10d | 2015-09-03 A | 2015-09-16 | 11 | 70% | 3d | 2015-08-24 | 2015-09-04 | 10d | 15d | 0d | Robin Wood; Katie Jordan | 160h | 112h | 7,360 | 7,360 | 5,152 |
| 13 | 3.3 | Interior illustration design |  | 15d | 2015-09-03 A | 2015-09-23 | 12SS | 47% | 8d | 2015-08-24 | 2015-09-11 | 15d | 10d |  | William Flash | 120h | 56h | 6,600 | 6,600 | 3,080 |
| 14 | 4 | **Pages review** |  | 20d | 2015-10-08 | 2015-11-04 | 10, 5 |  |  | 2015-09-28 | 2015-10-23 | 20d | 0d |  |  | 280h |  | 14,580 | 14,580 |  |
| 15 | 4.1 | Proofread and index |  | 10d | 2015-10-08 | 2015-10-21 |  |  |  | 2015-09-28 | 2015-10-09 | 10d | 0d |  | John Evans; Katie Jordan | 160h |  | 8,800 | 8,800 |  |
| 16 | 4.2 | Incorporate 1st Pages review |  | 5d | 2015-10-22 | 2015-10-28 | 15 |  |  | 2015-10-12 | 2015-10-16 | 5d | 0d |  | Carole Poland | 40h |  | 2,100 | 2,100 |  |
| 17 | 4.3 | Send proofed pages to Production | milestone | 0d | 2015-10-28 | 2015-10-28 | 16 |  |  | 2015-10-16 | 2015-10-16 | 0d | 0d |  | Robin Wood |  |  |  |  |  |
| 18 | 4.4 | Enter page corrections and index |  | 5d | 2015-10-29 | 2015-11-04 | 17 |  |  | 2015-10-19 | 2015-10-23 | 5d | 0d |  | Katie Jordan; Robin Wood | 80h |  | 3,680 | 3,680 |  |
| 19 | 4.5 | Send to print service | milestone | 0d | 2015-11-04 | 2015-11-04 | 18 |  |  | 2015-10-23 | 2015-10-23 | 0d | 0d |  |  |  |  |  |  |  |
